Schedule from MS Project, 2024-06-03 to 2025-01-06.
Microsoft

## Calendars

- 标准: Mon-Fri 08:00-12:00, 13:00-17:00; Sat-Sun off.

## Resources

| Resource |
| --- |
| PM3 |
| PE7 |
| RE8 |
| SE9 |
| RE7 |
| RE103 |
| RE118 |
| RE120 |
| RE102 |
| RE117 |
| PM6 |
| SE7 |
| SE204 |
| SE205 |
| SE501 |
| SE503 |
| SE8 |
| SE504 |
| PE202 |
| PM4 |
| PM5 |
| PE206 |
| PE8 |
| PE9 |
| PE10 |
| PE203 |
| PE205 |
| TE302 |
| TE510 |
| TE404 |
| TE405 |
| TE509 |
| TE870 |
| RE119 |
| DE205 |
| DE206 |
| DE204 |
| DE203 |
| DE105 |
| TE2403 |
| PM8 |
| PM12 |
| SE51 |
| SE54 |
| PE734 |
| PE735 |
| PE736 |
| TE871 |
| TE872 |
| RE111 |

## Schedule

| ID | WBS | Task | Duration | Start | Finish | Predecessors | Total slack | Resources | Work | Amount of work | Productivity Rate | Text3 |
| --- | --- | --- | --- | --- | --- | --- | --- | --- | --- | --- | --- | --- |
| 1 | 1 | **Project Plan** | 3.74d | 2024-06-03 | 2024-06-06 |  |  |  | 84.88h |  |  |  |
| 2 | 1.1 | Write Plan | 1.59d | 2024-06-03 | 2024-06-04 |  | 0d | PM3; PM4 | 25.44h | 102 pages | 4 pages/Hour | 17 hours/HC |
| 3 | 1.2 | **Review Plan** | 1.31d | 2024-06-04 | 2024-06-06 | 2 | 0d |  | 46h |  |  |  |
| 4 | 1.2.1 | Preparation for review | 0.8d | 2024-06-04 | 2024-06-05 | 2 | 0d | PE7; SE7; TE302; DE105 | 25.6h |  | 4 pages/Hour | 28 hours/HC |
| 5 | 1.2.2 | Review Meeting | 0.51d | 2024-06-05 | 2024-06-06 | 4 | 0d | PE7; PM3; SE7; TE302; DE105 | 20.4h |  | 5 pages/Hour | 17 hours/HC |
| 6 | 1.3 | Rework | 0.84d | 2024-06-06 | 2024-06-06 | 5 | 0d | PM3; PM4 | 13.44h | 67 defects | 5 defects/Hour | 7 hours/HC |
| 8 | 2 | **Requirements** | 7.04d | 2024-06-06 | 2024-06-17 | 6 | 0d |  | 141.92h |  |  |  |
| 9 | 2.1 | Write requirements | 1.95d | 2024-06-06 | 2024-06-10 | 6 | 0d | RE7; RE8; RE102 | 46.8h | 187 Req | 4 Req/Hour | 42 hours/HC |
| 10 | 2.2 | Write Use Case Model | 0.75d | 2024-06-10 | 2024-06-11 | 9 | 0d | RE103; RE117 | 12h | 48 Use Cases | 4 use case/Hour | 7 hours/HC |
| 11 | 2.3 | **Review Requirements/ Use Case Model** | 1.79d | 2024-06-11 | 2024-06-13 | 10 | 0d |  | 62.72h |  |  |  |
| 12 | 2.3.1 | Preparation for review | 1.11d | 2024-06-11 | 2024-06-12 | 10 | 0d | RE118; RE119; RE120; SE8 | 35.52h |  | 8 Req/Hour | 21 hours/HC |
| 14 | 2.3.2 | Review Meeting | 0.68d | 2024-06-12 | 2024-06-13 | 12 | 0d | RE8; SE7; RE7; RE103; PE7 | 27.2h |  | 8 Req/Hour | 20 hours/Hc |
| 16 | 2.4 | Rework | 2.55d | 2024-06-13 | 2024-06-17 | 14 | 0d | RE7 | 20.4h | 102 defects | 5 defects/Hour | 17 hours/HC |
| 18 | 3 | **Analysis** | 3.52d | 2024-06-17 | 2024-06-21 | 16 | 0d |  | 49.44h |  |  |  |
| 19 | 3.1 | Write Analysis Document | 0.76d | 2024-06-17 | 2024-06-18 | 16 | 0d | SE7; SE8 | 12.16h | 61 pages | 5 pages/Hour | 14 hours/HC |
| 20 | 3.2 | **Review Analysis Document** | 0.57d | 2024-06-18 | 2024-06-19 | 19 | 0d |  | 19.76h |  |  |  |
| 21 | 3.2.1 | Preparation for Analysis Document | 0.38d | 2024-06-18 | 2024-06-19 | 19 | 0d | SE204; SE9; RE8; PE8 | 12.16h |  | 5 pages/Hour | 12 hours/HC |
| 22 | 3.2.2 | Review Meeting | 0.19d | 2024-06-19 | 2024-06-19 | 21 | 0d | SE7; SE8; SE9; PE7; TE302 | 7.6h |  | 8 pages/Hour | 6 hours/HC |
| 23 | 3.3 | Rework | 2.19d | 2024-06-19 | 2024-06-21 | 22 | 0d | SE8 | 17.52h | 70 defects | 4 defects/Hour | 8 hours/HC |
| 25 | 4 | **Design** | 20.7d | 2024-06-21 | 2024-07-22 | 23 | 0d |  | 280.08h |  |  |  |
| 26 | 4.1 | Write DD | 1.56d | 2024-06-21 | 2024-06-24 | 23 | 0d | SE8; SE204; SE205 | 37.44h | 150 pages | 4 pages/Hour | 45 hours/HC |
| 27 | 4.2 | **Review DD** | 2.19d | 2024-06-24 | 2024-06-27 | 26 | 0d |  | 75.12h |  |  |  |
| 28 | 4.2.1 | Preparation for DD | 1.56d | 2024-06-24 | 2024-06-26 | 26 | 0d | SE501; SE503; PE9; TE302 | 49.92h |  | 3 pages/Hour | 60 hours/HC |
| 29 | 4.2.2 | Review Meeting | 0.63d | 2024-06-26 | 2024-06-27 | 28 | 0d | SE8; SE9; PE7; PE8; TE302 | 25.2h |  | 6 pages/Hour | 30 hours/HC |
| 30 | 4.3 | Rework | 3.3d | 2024-06-27 | 2024-07-02 | 29 | 0d | SE8 | 26.4h | 132 defects | 5 defects/Hour | 51 hours/hc |
| 31 | 4.4 | Write Data Model (DM) | 9.75d | 2024-07-02 | 2024-07-16 | 30 | 0d | SE503 | 78h | 78 pages | 1 page/Hour | 22 hours/HC |

| ID | WBS | Task | Duration | Start | Finish | Predecessors | Total slack | Free slack | Resources | Work | Productivity Rate | Text3 | Amount of work |
| --- | --- | --- | --- | --- | --- | --- | --- | --- | --- | --- | --- | --- | --- |
| 32 | 4.5 | **Review DM** | 1.2d | 2024-07-16 | 2024-07-17 | 31 | 0d |  |  | 41.52h |  |  |  |
| 33 | 4.5.1 | Preparation for DM | 0.81d | 2024-07-16 | 2024-07-17 | 31 | 0d |  | SE504; PE10; PE202; TE2403 | 25.92h | 3 pages/Hour | 8 hours/HC |  |
| 34 | 4.5.2 | Review Meeting | 0.39d | 2024-07-17 | 2024-07-17 | 33 | 0d |  | SE503; PE10; PE202; TE2403; TE404 | 15.6h | 5 pages/Hour | 5 hours/HC |  |
| 35 | 4.6 | Rework | 2.7d | 2024-07-17 | 2024-07-22 | 34 | 0d |  | SE503 | 21.6h | 5 defects/Hour | 18 hours/HC | 108 defects |
| 37 | 5 | **Coding and unit test** | 73.39d | 2024-07-22 | 2024-10-31 | 35 | 0d |  |  | 1368.32h |  |  |  |
| 38 | 5.1 | Write Code | 13.91d | 2024-07-22 | 2024-08-09 | 35 | 0d |  | PE7; PE8; PE9; PE10 | 445.12h | 9 SLOC/Hour | 373 hours/HC | 4007 SLOC |
| 39 | 5.2 | **Unit Testing** | 49.98d | 2024-08-09 | 2024-10-18 | 38 | 0d |  |  | 799.68h |  |  |  |
| 40 | 5.2.1 | Prepare/Execute Test Cases | 27.7d | 2024-08-09 | 2024-09-17 | 38 | 0d |  | TE302; TE2403 | 443.2h | 5 Test Cases/Day | 18 days/HC | 277 test cases |
| 41 | 5.2.2 | Fix Found Defects | 12.38d | 2024-09-17 | 2024-10-04 | 40 | 0d |  | PE7; PE8 | 198.08h | 4 Defects/Day | 29 days/HC | 99 defects |
| 42 | 5.2.3 | Test Fixed Defects | 9.9d | 2024-10-04 | 2024-10-18 | 41 | 0d |  | TE302; TE2403 | 158.4h | 5 Defects/Day | 23 days/HC | 99 defects |
| 43 | 5.3 | **Code Inspection** | 9.5d | 2024-10-18 | 2024-10-31 | 42 | 0d |  |  | 123.52h |  |  |  |
| 44 | 5.3.1 | Preparation for Code Inspection | 1.14d | 2024-10-18 | 2024-10-21 | 42 | 0d |  | PE202; PE203; TE302; TE2403 | 36.48h | 110 SLOC/Hour | 46 hours/hc |  |
| 45 | 5.3.2 | Code Inspection Meeting | 0.63d | 2024-10-21 | 2024-10-21 | 44 | 0d |  | PE7; PE202; PE203; TE302; TE404 | 25.2h | 160 SLOC/Hour | 30 hours/HC |  |
| 46 | 5.3.3 | Rework | 7.73d | 2024-10-21 | 2024-10-31 | 45 | 0d |  | PE8 | 61.84h | 5 defects/Hour | 41 hours/HC | 309 defects |
| 48 | 6 | **System Integration Testing** | 117.59d | 2024-06-17 | 2024-11-28 | 16 | 0d |  |  | 637.28h |  |  |  |
| 49 | 6.1 | Write test plan (TP) | 9.93d | 2024-06-17 | 2024-07-01 | 16 | 103.02d | 0d | TE404; TE405; TE509 | 238.32h | 5 pages/Day | 37 Days/HC | 149 pages |
| 50 | 6.2 | **Review TP** | 4.64d | 2024-07-01 | 2024-07-08 | 49 | 103.02d |  |  | 79.28h |  |  |  |
| 51 | 6.2.1 | Preparation for TP | 0.93d | 2024-07-01 | 2024-07-02 | 49 | 103.02d | 0d | TE2403; TE510; PE9; PE203 | 29.76h | 5 pages/Hour |  |  |
| 52 | 6.2.2 | Review TP Meeting | 0.62d | 2024-07-02 | 2024-07-03 | 51 | 103.02d | 0d | TE404; TE2403; TE510; PE9; PE203 | 24.8h | 6 pages/Hour |  |  |
| 53 | 6.2.3 | Rework | 3.09d | 2024-07-03 | 2024-07-08 | 52 | 103.02d | 0d | TE509 | 24.72h | 4 defects/Hour | 30 hours/HC | 99 defects |
| 54 | 6.3 | Execute TP (test cases) | 3.31d | 2024-10-31 | 2024-11-05 | 46 | 0d |  | TE510; TE509 | 52.96h | 30 test cases/day | 10days/HC | 199 test cases |
| 55 | 6.4 | Fix Found Defects | 10.13d | 2024-11-05 | 2024-11-19 | 54 | 0d |  | PE202; PE203 | 162.08h | 4 defects/day | 22 days/HC | 81 defects |
| 56 | 6.5 | Test Fixed Defects | 6.54d | 2024-11-19 | 2024-11-28 | 55 | 0d |  | TE509; TE510 | 104.64h | 10 defects/day |  | 81 defects |
| 58 | 7 | **Load,Stress, and Performance Testing** | 129.69d | 2024-07-08 | 2025-01-06 | 53 | 0d |  |  | 894.88h |  |  |  |
| 59 | 7.1 | Write test plan (TP) | 14.75d | 2024-07-08 | 2024-07-29 | 53 | 109.15d | 0d | TE510; TE405; TE509 | 354h | 4 pages/Day | 23 days/HC | 177 pages |

| ID | WBS | Task | Duration | Start | Finish | Predecessors | Total slack | Free slack | Resources | Work | Productivity Rate | Amount of work | Text3 |
| --- | --- | --- | --- | --- | --- | --- | --- | --- | --- | --- | --- | --- | --- |
| 60 | 7.2 | **Review TP** | 5.79d | 2024-07-29 | 2024-08-06 | 59 | 109.15d |  |  | 114.16h |  |  |  |
| 61 | 7.2.1 | Preparation for TP | 1.84d | 2024-07-29 | 2024-07-31 | 59 | 109.15d | 0d | TE404; TE2403; PE205; PE206 | 58.88h | 3 pages/Hour |  |  |
| 62 | 7.2.2 | Review TP Meeting | 0.74d | 2024-07-31 | 2024-07-31 | 61 | 109.15d | 0d | TE404; TE405; TE2403; PE205; PE206 | 29.6h | 6 pages/Hour |  |  |
| 63 | 7.2.3 | Rework | 3.21d | 2024-07-31 | 2024-08-06 | 62 | 109.15d |  | TE510 | 25.68h | 3 defects/Hour | 77 defects |  |
| 64 | 7.3 | Execute TP (test cases) | 15.94d | 2024-11-28 | 2024-12-20 | 56 | 0d |  | TE510; TE509 | 255.04h | 8 test cases/day | 255 test cases |  |
| 65 | 7.4 | Fix Found Defects | 6.6d | 2024-12-20 | 2024-12-31 | 64 | 0d |  | PE202; PE203 | 105.6h | 5 defects/day | 66 defects |  |
| 66 | 7.5 | Test Fixed Defects | 4.13d | 2024-12-31 | 2025-01-06 | 65 | 0d |  | TE509; TE510 | 66.08h | 8 defects/day | 66 defects |  |
| 68 | 8 | **Documentation** | 5.45d | 2024-10-30 | 2024-11-06 | 16 | 33.5d |  |  | 97.6h |  |  |  |
| 69 | 8.1 | User Documentation | 1.12d | 2024-10-30 | 2024-10-31 | 46FF | 33.5d | 0d | DE204; DE105; DE203 | 26.88h | 5 pages/Hour | 134 pages | 42 hours/HC |
| 70 | 8.2 | **Review UD** | 4.33d | 2024-10-31 | 2024-11-06 | 69 | 33.5d |  |  | 70.72h |  |  |  |
| 71 | 8.2.1 | Preparation for UD Review | 1.05d | 2024-10-31 | 2024-11-01 | 69 | 33.5d | 0d | DE205; DE206; SE501; PE8 | 33.6h | 4 pages/Hour |  |  |
| 72 | 8.2.2 | Review UD Meeting | 0.34d | 2024-11-01 | 2024-11-01 | 71 | 33.5d | 0d | DE105; DE205; DE206; SE501; PE8 | 13.6h | 10 pages/Hour |  |  |
| 73 | 8.2.3 | Rework | 2.94d | 2024-11-01 | 2024-11-06 | 72 | 33.5d | 0d | DE105 | 23.52h | 8 defects/Hour | 188 defects |  |
| 75 | 9 | **Training Material** | 8.82d | 2024-11-06 | 2024-11-19 | 73 | 33.5d |  |  | 194.16h |  |  |  |
| 76 | 9.1 | Tutorial | 4.73d | 2024-11-06 | 2024-11-13 | 73 | 33.5d | 0d | DE203; DE204 | 75.68h | 4 pages/Hour | 303 pages |  |
| 77 | 9.2 | **Review Tutorial** | 4.09d | 2024-11-13 | 2024-11-19 | 76 | 33.5d |  |  | 118.48h |  |  |  |
| 78 | 9.2.1 | Preparation for Tutorial Review | 1.89d | 2024-11-13 | 2024-11-15 | 76 | 33.5d | 0d | DE205; DE206; SE503; PE7 | 60.48h | 5 pages/Hour |  |  |
| 79 | 9.2.2 | Review Tutorial Meeting | 0.95d | 2024-11-15 | 2024-11-18 | 78 | 33.5d | 0d | DE205; DE203; SE8; SE503; PE7 | 38h | 8 pages/Hour |  |  |
| 80 | 9.2.3 | Rework | 1.25d | 2024-11-18 | 2024-11-19 | 79 | 33.5d |  | DE203; DE204 | 20h | 15 defects/Hour | 299 defects |  |
| 85 | 10 | **Project Plan** | 3.54d? | 2024-06-10 | 2024-06-13 |  |  |  |  | 41.04h |  |  |  |
| 86 | 10.1 | Write Plan | 0.76d? | 2024-06-10 | 2024-06-10 |  | 32.65d | 0d | DE105 | 6.08h | 5 pages/Hour | 61 pages |  |
| 87 | 10.2 | **Review Plan** | 0.53d? | 2024-06-10 | 2024-06-11 | 86 | 32.65d |  |  | 16.96h |  |  |  |
| 88 | 10.2.1 | Preparation for review | 0.38d? | 2024-06-10 | 2024-06-11 | 86 | 32.65d | 0d | SE51; PE734; TE870; RE102 | 12.16h | 5 pages/Hour |  |  |
| 89 | 10.2.2 | Review Meeting | 0.15d? | 2024-06-11 | 2024-06-11 | 88 | 32.65d | 0d | SE51; PE734; TE870; RE102 | 4.8h | 10 pages/Hour |  |  |
| 90 | 10.3 | Rework | 2.25d? | 2024-06-11 | 2024-06-13 | 89 | 32.65d | 0d | DE105 | 18h | 3 defects/Hour | 108 defects |  |

| ID | WBS | Task | Duration | Start | Finish | Predecessors | Total slack | Free slack | Resources | Work | Amount of work | Productivity Rate |
| --- | --- | --- | --- | --- | --- | --- | --- | --- | --- | --- | --- | --- |
| 92 | 11 | **Requirement** | 4.62d? | 2024-06-13 | 2024-06-20 | 90 | 32.65d |  |  | 127.84h |  |  |
| 93 | 11.1 | Write requirements | 1.97d? | 2024-06-13 | 2024-06-17 | 90 | 32.65d | 0d | RE102; RE103; RE111 | 47.28h | 189 Req | 4 Req/Hour |
| 94 | 11.2 | **Review Requirements** | 1.65d? | 2024-06-17 | 2024-06-19 | 93 | 32.65d |  |  | 56.56h |  |  |
| 95 | 11.2.1 | Preparation for review | 1.18d? | 2024-06-17 | 2024-06-18 | 93 | 32.65d | 0d | RE118; SE54; RE119; RE120 | 37.76h |  | 5 Req/Hour |
| 96 | 11.2.2 | Review Meeting | 0.47d? | 2024-06-18 | 2024-06-19 | 95 | 32.65d | 0d | RE118; SE54; RE102; RE119; RE120 | 18.8h |  | 10 Req/Hour |
| 97 | 11.3 | Rework | 1d? | 2024-06-19 | 2024-06-20 | 96 | 32.65d | 0d | RE102; RE103; RE111 | 24h | 192 defects | 8 defects/Hour |
| 99 | 12 | **Lab and Environment Setup** | 10.17d? | 2024-06-13 | 2024-06-27 | 90 | 136.33d |  |  | 198.16h |  |  |
| 100 | 12.1 | **Hardware** | 10.17d? | 2024-06-13 | 2024-06-27 | 90 | 136.33d |  |  | 137.36h |  |  |
| 101 | 12.1.1 | Install Server | 7d? | 2024-06-13 | 2024-06-24 | 90 | 136.33d | 0d | SE501; SE503 | 112h | 14 servers | 1 server/day |
| 102 | 12.1.2 | Install Clients | 3.17d? | 2024-06-24 | 2024-06-27 | 101 | 136.33d |  | SE504 | 25.36h | 19 clients | 6 clients/day |
| 103 | 12.2 | **Software** | 4.6d? | 2024-06-13 | 2024-06-20 | 90 | 141.9d |  |  | 60.8h |  |  |
| 104 | 12.2.1 | Install Development Tools | 1.6d? | 2024-06-13 | 2024-06-17 | 90 | 141.9d | 0d | SE9 | 12.8h | 8 tools | 5 tools/day |
| 105 | 12.2.2 | Install Testing Tools | 3d? | 2024-06-17 | 2024-06-20 | 104 | 141.9d |  | SE51; SE205 | 48h | 12 tools | 2 tools/day |
| 107 | 13 | **Analysis/Design Document** | 4.26d? | 2024-06-20 | 2024-06-26 | 97 | 32.65d |  |  | 34.08h |  |  |
| 108 | 13.1 | Write DD | 0.2d? | 2024-06-20 | 2024-06-20 | 97 | 32.65d | 0d | SE54 | 1.6h | 8 pages | 5 pages/Hour |
| 109 | 13.2 | **Review DD** | 0.3d? | 2024-06-20 | 2024-06-20 | 108 | 32.65d |  |  | 2.4h |  |  |
| 110 | 13.2.1 | Preparation for DD | 0.2d? | 2024-06-20 | 2024-06-20 | 108 | 32.65d | 0d | SE9 | 1.6h |  | 5 pages/Hour |
| 111 | 13.2.2 | Review Meeting | 0.1d? | 2024-06-20 | 2024-06-20 | 110 | 32.65d | 0d | SE504 | 0.8h |  | 10 pages/Hour |
| 112 | 13.3 | Rework | 3.76d? | 2024-06-20 | 2024-06-26 | 111 | 32.65d | 0d | SE54 | 30.08h | 301 defects | 10 defects/Hour |
| 114 | 14 | **Data Model** | 4.98d? | 2024-06-26 | 2024-07-03 | 112 | 132.64d |  |  | 126.4h |  |  |
| 115 | 14.1 | Create Data Model | 2.58d? | 2024-06-26 | 2024-07-01 | 112 | 132.64d | 0d | SE7; SE51; SE204 | 61.92h | 62 pages | 1 page/Hour |
| 116 | 14.2 | **Review Data Model** | 0.67d? | 2024-07-01 | 2024-07-01 | 115 | 132.64d |  |  | 22.96h |  |  |
| 117 | 14.2.1 | Preparation for DM | 0.48d? | 2024-07-01 | 2024-07-01 | 115 | 132.64d | 0d | SE205; SE501; PE202; PE203 | 15.36h |  | 4 pages/Hour |
| 118 | 14.2.2 | Review Meeting | 0.19d? | 2024-07-01 | 2024-07-01 | 117 | 132.64d | 0d | SE205; SE501; SE7; PE202; PE203 | 7.6h |  | 8 pages/Hour |
| 119 | 14.3 | Rework | 1.73d? | 2024-07-01 | 2024-07-03 | 118 | 132.64d |  | SE7; SE51; SE204 | 41.52h | 166 defects | 4 defects/Hour |

| ID | WBS | Task | Duration | Start | Finish | Predecessors | Total slack | Free slack | Resources | Work | Amount of work | Productivity Rate |
| --- | --- | --- | --- | --- | --- | --- | --- | --- | --- | --- | --- | --- |
| 121 | 15 | **Coding and unit test** | 65.67d? | 2024-06-26 | 2024-09-26 | 112 | 32.65d |  |  | 1500.48h |  |  |
| 122 | 15.1 | Write Code | 30.79d? | 2024-06-26 | 2024-08-08 | 112 | 32.65d | 0d | PE734; PE735; PE736 | 738.96h | 4927 SLOC | 5 SLOC/Hour |
| 123 | 15.2 | **Unit Testing** | 28.74d? | 2024-08-08 | 2024-09-18 | 122 | 32.65d |  |  | 560.08h |  |  |
| 124 | 15.2.1 | Prepare/Execute Test Cases | 6.81d? | 2024-08-08 | 2024-08-19 | 122 | 32.65d | 0d | PE734; PE735 | 108.96h | 327 test cases | 3 Test Case/Hour |
| 125 | 15.2.2 | Fix Found Defects | 12.53d? | 2024-08-19 | 2024-09-04 | 124 | 32.65d | 0d | PE734; PE735; PE736 | 300.72h | 188 Defects | 5 Defects/Day |
| 126 | 15.2.3 | Test Fixed Defects | 9.4d? | 2024-09-04 | 2024-09-18 | 125 | 32.65d | 0d | PE734; PE735 | 150.4h | 188 Defects | 10 Defects/Day |
| 127 | 15.3 | **Code Inspection** | 6.14d? | 2024-09-18 | 2024-09-26 | 126 | 32.65d |  |  | 201.44h |  |  |
| 128 | 15.3.1 | Preparation for Code Inspection | 1.23d? | 2024-09-18 | 2024-09-19 | 126 | 32.65d | 0d | TE870; TE871; PE9; PE10 | 39.36h |  | 125 SLOC/Hour |
| 129 | 15.3.2 | Code Inspection Meeting | 0.62d? | 2024-09-19 | 2024-09-19 | 128 | 32.65d | 0d | TE870; TE871; PE734; PE9; PE10 | 24.8h |  | 200 SLOC/Hour |
| 130 | 15.3.3 | Rework | 4.29d? | 2024-09-19 | 2024-09-26 | 129 | 32.65d | 0d | PE734; PE206; PE735; PE736 | 137.28h | 412 defects | 3 defects/Hour |
| 132 | 16 | **Testing** | 109.23d? | 2024-06-20 | 2024-11-20 | 97 | 32.65d |  |  | 1050.16h |  |  |
| 133 | 16.1 | Write test plan (TP) | 11.93d? | 2024-06-20 | 2024-07-08 | 97 | 124.47d | 0d | TE870; TE871; TE872 | 286.32h | 179 pages | 5 pages/Day |
| 134 | 16.2 | **Review TP** | 5.48d? | 2024-07-08 | 2024-07-15 | 133 | 124.47d |  |  | 135.04h |  |  |
| 135 | 16.2.1 | Preparation for TP | 2.8d? | 2024-07-08 | 2024-07-11 | 133 | 124.47d | 0d | TE302; TE2403; TE404; PE205 | 89.6h |  | 2 pages/Hour |
| 136 | 16.2.2 | Review TP Meeting | 0.75d? | 2024-07-11 | 2024-07-11 | 135 | 124.47d | 0d | TE302; TE2403; TE404; TE870; PE205 | 30h |  | 6 pages/Hour |
| 137 | 16.2.3 | Rework | 1.93d? | 2024-07-11 | 2024-07-15 | 136 | 124.47d |  | TE871 | 15.44h | 77 defects | 5 defects/Hour |
| 138 | 16.3 | Execute TP (test cases) | 28.8d? | 2024-09-26 | 2024-11-06 | 130 | 32.65d | 0d | TE405; TE872 | 460.8h | 288 test cases | 5 test cases/day |
| 139 | 16.4 | Fix Found Defects | 10.5d? | 2024-11-06 | 2024-11-20 | 138 | 32.65d |  | TE405; TE872 | 168h | 210 defects | 10 defects/day |
| 141 | 17 | **Documentation** | 8.54d? | 2024-09-20 | 2024-10-03 | 97 | 66.64d |  |  | 197.6h |  |  |
| 142 | 17.1 | User Documentation | 3.23d? | 2024-09-20 | 2024-09-26 | 130FF | 66.64d | 0d | DE105; DE203; DE204 | 77.52h | 310 pages | 4 pages/Hour |
| 143 | 17.2 | **Review UD** | 5.31d? | 2024-09-26 | 2024-10-03 | 142 | 66.64d |  |  | 120.08h |  |  |
| 144 | 17.2.1 | Preparation for UD | 1.94d? | 2024-09-26 | 2024-09-30 | 142 | 66.64d | 0d | DE205; SE51; DE206; PE736 | 62.08h |  | 5 pages/Hour |
| 145 | 17.2.2 | Review UD Meeting | 0.97d? | 2024-09-30 | 2024-10-01 | 144 | 66.64d | 0d | DE205; SE51; DE206; PE736; DE105 | 38.8h |  | 8 pages/Hour |
| 146 | 17.2.3 | Rework | 2.4d? | 2024-10-01 | 2024-10-03 | 145 | 66.64d |  | DE203 | 19.2h | 288 defects | 15 defects/Hour |
